# ANARI CTS 1.0

Schedule from MS Project, 2022-09-12 to 2022-11-11.

## Calendars

- Standard: Mon-Fri 08:00-12:00, 13:00-17:00; Sat-Sun off.

## Resources

| Resource |
| --- |
| Management |
| Project Manager |
| Analyst |
| Developer |
| Testers |
| Trainers |
| Technical Communicators |
| Deployment Team |

## Schedule

| ID | WBS | Task | Duration | Start | Finish | Predecessors | Total slack | Free slack |
| --- | --- | --- | --- | --- | --- | --- | --- | --- |
| 1 | 1 | **Project Setup** | 5d | 2022-09-12 08:00 | 2022-09-16 17:00 |  |  |  |
| 2 | 1.1 | **Setup architecture** | 3d | 2022-09-12 08:00 | 2022-09-14 17:00 |  | 16d |  |
| 3 | 1.1.1 | Setup ANARI SDK | 0.5d | 2022-09-12 08:00 | 2022-09-12 12:00 |  | 16.5d | 0.5d |
| 4 | 1.1.2 | Setup C++ Wrapper | 1d | 2022-09-12 08:00 | 2022-09-12 17:00 |  | 16d | 0d |
| 5 | 1.1.3 | Setup Python | 1d | 2022-09-12 08:00 | 2022-09-12 17:00 |  | 16d | 0d |
| 6 | 1.1.4 | Setup pybind11 | 2d | 2022-09-13 08:00 | 2022-09-14 17:00 | 4, 5, 3 | 16d |  |
| 7 | 2 | **Implementation Phase** | 15d | 2022-09-19 08:00 | 2022-10-07 17:00 | 1 |  |  |
| 8 | 2.1 | **Render a set of known test scenes** | 7.5d | 2022-09-19 08:00 | 2022-09-28 12:00 |  | 14d | 0d |
| 9 | 2.1.1 | Define test scene format | 1d | 2022-09-19 08:00 | 2022-09-19 17:00 |  | 14d | 0d |
| 10 | 2.1.2 | **Geometries generation** | 1d | 2022-09-20 08:00 | 2022-09-20 17:00 | 9 | 14d | 0d |
| 11 | 2.1.2.1 | **Triangle** | 0.9d | 2022-09-20 08:00 | 2022-09-20 16:12 |  | 14.1d |  |
| 12 | 2.1.2.1.1 | Triangle | 0.3d | 2022-09-20 08:00 | 2022-09-20 10:24 |  | 14.1d | 0d |
| 13 | 2.1.2.1.2 | Plane | 0.3d | 2022-09-20 10:24 | 2022-09-20 13:48 | 12 | 14.1d | 0d |
| 14 | 2.1.2.1.3 | Cube | 0.3d | 2022-09-20 13:48 | 2022-09-20 16:12 | 13, 12 | 14.1d |  |
| 15 | 2.1.2.2 | **Quad** | 1d | 2022-09-20 08:00 | 2022-09-20 17:00 |  | 14d |  |
| 16 | 2.1.2.2.1 | Quad | 0.5d | 2022-09-20 08:00 | 2022-09-20 12:00 |  | 14d | 0d |
| 17 | 2.1.2.2.2 | Cube | 0.5d | 2022-09-20 13:00 | 2022-09-20 17:00 | 16 | 14d |  |
| 18 | 2.1.2.3 | Sphere | 1d | 2022-09-20 08:00 | 2022-09-20 17:00 |  | 14d |  |
| 19 | 2.1.2.4 | Curve | 1d | 2022-09-20 08:00 | 2022-09-20 17:00 |  | 14d |  |
| 20 | 2.1.2.5 | Cone | 1d | 2022-09-20 08:00 | 2022-09-20 17:00 |  | 14d |  |
| 21 | 2.1.2.6 | Cylinder | 1d | 2022-09-20 08:00 | 2022-09-20 17:00 |  | 14d |  |
| 22 | 2.1.3 | Generate with all (viable) permutations | 2d | 2022-09-21 08:00 | 2022-09-22 17:00 | 9, 10 | 14d | 0d |
| 23 | 2.1.4 | **Render test scenes** | 3.5d | 2022-09-23 08:00 | 2022-09-28 12:00 | 22, 10, 9 | 14d | 5d |
| 24 | 2.1.4.1 | Write Python API | 0.5d | 2022-09-23 08:00 | 2022-09-23 12:00 |  | 16.5d | 2.5d |
| 25 | 2.1.4.2 | Write C++ backend | 3d | 2022-09-23 08:00 | 2022-09-27 17:00 |  | 14d | 0d |
| 26 | 2.1.4.3 | Connect via pybind11 | 0.5d | 2022-09-28 08:00 | 2022-09-28 12:00 | 24, 25 | 14d |  |

| ID | WBS | Task | Duration | Start | Finish | Predecessors | Total slack | Free slack |
| --- | --- | --- | --- | --- | --- | --- | --- | --- |
| 27 | 2.2 | **Image comparison “smoke tests”** | 5d | 2022-09-28 13:00 | 2022-10-05 12:00 | 8 | 14d | 0d |
| 28 | 2.2.1 | Compare ground truth with test renderings | 3d | 2022-09-28 13:00 | 2022-10-03 12:00 |  | 14d | 0d |
| 29 | 2.2.2 | Compile PDF report | 2d | 2022-10-03 13:00 | 2022-10-05 12:00 | 28 | 14d |  |
| 30 | 2.3 | **Verification of object/parameter info metadata** | 1.5d | 2022-09-19 08:00 | 2022-09-20 12:00 |  | 25d | 11d |
| 31 | 2.3.1 | Write Python API | 0.5d | 2022-09-19 08:00 | 2022-09-19 12:00 |  | 25.5d | 0.5d |
| 32 | 2.3.2 | Write C++ backend | 1d | 2022-09-19 08:00 | 2022-09-19 17:00 |  | 25d | 0d |
| 33 | 2.3.3 | Connect via pybind11 | 0.5d | 2022-09-20 08:00 | 2022-09-20 12:00 | 31, 32 | 25d |  |
| 34 | 2.4 | **Verification of known object properties** | 1.5d | 2022-09-28 13:00 | 2022-09-29 17:00 | 8 | 17.5d | 3.5d |
| 35 | 2.4.1 | Write Python API | 0.5d | 2022-09-28 13:00 | 2022-09-28 17:00 |  | 18d | 0.5d |
| 36 | 2.4.2 | Write C++ backend | 1d | 2022-09-28 13:00 | 2022-09-29 12:00 |  | 17.5d | 0d |
| 37 | 2.4.3 | Connect via pybind11 | 0.5d | 2022-09-29 13:00 | 2022-09-29 17:00 | 35, 36 | 17.5d |  |
| 38 | 2.5 | **List core extensions implemented by a device** | 1.5d | 2022-09-19 08:00 | 2022-09-20 12:00 |  | 25d | 11d |
| 39 | 2.5.1 | Write Python API | 0.5d | 2022-09-19 08:00 | 2022-09-19 12:00 |  | 25.5d | 0.5d |
| 40 | 2.5.2 | Write C++ backend | 1d | 2022-09-19 08:00 | 2022-09-19 17:00 |  | 25d | 0d |
| 41 | 2.5.3 | Connect via pybind11 | 0.5d | 2022-09-20 08:00 | 2022-09-20 12:00 | 39, 40 | 25d |  |
| 42 | 2.6 | **Aggregate test results** | 2.5d | 2022-10-05 13:00 | 2022-10-07 17:00 | 8, 23, 27, 30, 34, 38 | 14d |  |
| 43 | 2.6.1 | Call all Python API functions | 0.5d | 2022-10-05 13:00 | 2022-10-05 17:00 |  | 14d | 0d |
| 44 | 2.6.2 | Compile PDF with all results | 2d | 2022-10-06 08:00 | 2022-10-07 17:00 | 43 | 14d |  |
| 45 | 3 | **Beta** | 10d? | 2022-10-10 08:00 | 2022-10-21 17:00 | 7 |  |  |
| 46 | 3.1 | Bug fixing | 2d? | 2022-10-10 08:00 | 2022-10-11 17:00 |  | 16d |  |
| 47 | 3.2 | Write tests | 4d | 2022-10-10 08:00 | 2022-10-13 17:00 |  | 14d |  |
| 48 | 3.3 | Fine tune features | 2d? | 2022-10-10 08:00 | 2022-10-11 17:00 |  | 16d |  |
| 49 | 4 | **Release Candidate** | 5d? | 2022-10-24 08:00 | 2022-10-28 17:00 | 45 |  |  |
| 50 | 4.1 | Bug fixing | 2d? | 2022-10-24 08:00 | 2022-10-25 17:00 |  | 8d |  |
| 51 | 4.2 | Write examples | 2d? | 2022-10-24 08:00 | 2022-10-25 17:00 |  | 8d |  |

| ID | WBS | Task | Type | Duration | Start | Finish | Predecessors | Total slack |
| --- | --- | --- | --- | --- | --- | --- | --- | --- |
| 52 | 5 | **Release** |  | 5d? | 2022-10-31 08:00 | 2022-11-04 17:00 | 49 |  |
| 53 | 5.1 | Documentation |  | 4d? | 2022-10-31 08:00 | 2022-11-03 17:00 |  | 5d |
| 54 | 5.2 | Demonstration |  | 0.5d? | 2022-10-31 08:00 | 2022-10-31 12:00 |  | 8.5d |
| 55 | 6 | ANARI CTS 1.0 complete | milestone | 0d | 2022-11-04 17:00 | 2022-11-04 17:00 | 52 | 5d |
| 56 | 7 | **Maintenance** |  | 5d? | 2022-11-07 08:00 | 2022-11-11 17:00 | 52 |  |
| 57 | 7.1 | Follow-up bugfixing |  | 1d? | 2022-11-07 08:00 | 2022-11-07 17:00 |  | 4d |
